# 简单项目计划

How a schedule from MS Project changed from version to version. A marks actual dates.

## Version 1 (saved 2020-12-01)

Note of the change: hejia201201

| ID | WBS | Task | Duration | Start | Finish | Predecessors | Total float | Constraint |
| --- | --- | --- | --- | --- | --- | --- | --- | --- |
| 1 | 1 | **启动** | 6d | 2020-11-02 | 2020-11-08 |  |  |  |
| 2 |  | 组建核心团队 | 2d | 2020-11-02 | 2020-11-03 |  |  |  |
| 3 |  | 干系人分析 | 1d | 2020-11-04 | 2020-11-04 | 2 |  |  |
| 4 |  | 里程碑计划 | 2d | 2020-11-05 | 2020-11-06 | 2, 3 |  |  |
| 5 |  | 制定项目章程 | 2d | 2020-11-05 | 2020-11-06 | 2, 3 |  |  |
| 6 |  | 项目启动大会 | 1d | 2020-11-08 | 2020-11-08 |  |  |  |
| 7 | 2 | **规划** | 28d | 2020-11-09 | 2020-12-15 |  |  |  |
| 8 | 2.1 | **规划范围** | 28d | 2020-11-09 | 2020-12-15 |  |  |  |
| 9 | 2.1.1 | **框架Selenium完善** | 2d | 2020-11-09 | 2020-11-10 |  |  |  |
| 10 |  | 完善框架 | 2d | 2020-11-09 | 2020-11-10 |  |  |  |
| 11 | 2.1.2 | **美化测试报告** | 3d | 2020-11-11 | 2020-11-13 |  |  |  |
| 12 |  | ReportNG美化测试 | 2d | 2020-11-11 | 2020-11-12 |  |  |  |
| 13 |  | Freemarker+Selenium+TestNG | 3d | 2020-11-11 | 2020-11-13 |  |  |  |
| 14 |  | testng-xslt | 2d | 2020-11-11 | 2020-11-12 |  |  |  |
| 15 | 2.1.3 | **手工测试** | 14d | 2020-11-09 | 2020-11-25 |  |  |  |
| 16 |  | 测试计划 | 2d | 2020-11-09 | 2020-11-10 |  |  |  |
| 17 | 2.1.3.2 | **黑盒测试** | 8d | 2020-11-11 | 2020-11-20 | 16 |  |  |
| 18 | 2.1.3.2.1 | **前台** | 2d | 2020-11-11 | 2020-11-12 |  |  |  |
| 19 |  | 附近职位 | 1d | 2020-11-11 | 2020-11-11 |  |  |  |
| 20 |  | 普工专区 | 1d | 2020-11-11 | 2020-11-11 |  |  |  |
| 21 |  | 兼职职位 | 1d | 2020-11-12 | 2020-11-12 |  |  |  |
| 22 |  | HR工具箱 | 1d | 2020-11-12 | 2020-11-12 |  |  |  |
| 23 |  | 找企业 | 1d | 2020-11-12 | 2020-11-12 |  |  |  |
| 24 | 2.1.3.2.2 | **后台** | 5d | 2020-11-16 | 2020-11-20 |  |  |  |
| 25 |  | 运营-商城 | 1d | 2020-11-13 | 2020-11-13 |  |  |  |
| 26 |  | 运营-广告 | 1d | 2020-11-13 | 2020-11-13 |  |  |  |
| 27 |  | 运营-财务 | 1d | 2020-11-15 | 2020-11-15 |  |  |  |
| 28 |  | 运营-专题 | 1d | 2020-11-16 | 2020-11-16 |  |  |  |
| 29 |  | 运营-举报 | 1d | 2020-11-18 | 2020-11-18 |  |  |  |
| 30 |  | 运营-营销 | 1d | 2020-11-18 | 2020-11-18 |  |  |  |
| 31 |  | 首页界面 | 1d | 2020-11-20 | 2020-11-20 |  |  |  |
| 32 | 2.1.3.3 | **探索性测试** | 3d | 2020-11-21 | 2020-11-23 | 16 |  |  |
| 33 | 2.1.3.3.1 | **前台** | 1d? | 2020-11-21 | 2020-11-21 |  |  |  |
| 34 |  | 附近职位 | 1d | 2020-11-21 | 2020-11-21 |  |  |  |
| 35 |  | 普工专区 | 1d | 2020-11-21 | 2020-11-21 |  |  |  |
| 36 |  | 兼职职位 | 1d | 2020-11-21 | 2020-11-21 |  |  |  |
| 37 |  | HR工具箱 | 1d | 2020-11-21 | 2020-11-21 |  |  |  |
| 38 |  | 找企业 | 1d | 2020-11-21 | 2020-11-21 |  |  |  |
| 39 | 2.1.3.3.2 | **后台** | 2d | 2020-11-22 | 2020-11-23 |  |  |  |
| 40 |  | 运营-商城 | 1d | 2020-11-22 | 2020-11-22 |  |  |  |
| 41 |  | 运营-广告 | 1d | 2020-11-22 | 2020-11-22 |  |  |  |
| 42 |  | 运营-财务 | 1d | 2020-11-22 | 2020-11-22 |  | 17d | start no earlier than 2020-11-22 |
| 43 |  | 运营-专题 | 1d | 2020-11-23 | 2020-11-23 |  | 16d | finish no earlier than 2020-11-23 |
| 44 |  | 运营-举报 | 1d | 2020-11-23 | 2020-11-23 |  | 16d | finish no earlier than 2020-11-23 |
| 45 |  | 运营-营销 | 1d | 2020-11-23 | 2020-11-23 |  | 16d | finish no earlier than 2020-11-23 |
| 46 |  | 首页界面 | 1d | 2020-11-23 | 2020-11-23 |  | 16d | finish no earlier than 2020-11-23 |
| 47 |  | 测试报告 | 1d | 2020-11-25 | 2020-11-25 | 17, 32 |  |  |
| 48 | 2.1.4 | **Jenkins学习** | 17d | 2020-11-16 | 2020-12-06 |  |  |  |
| 49 | 2.1.4.1 | **自动化测试** | 12d | 2020-11-16 | 2020-11-29 |  |  |  |
| 50 |  | 冒烟测试用例编写 | 2d | 2020-11-16 | 2020-11-17 |  |  |  |
| 51 | 2.1.4.1.2 | **代码实现用例** | 3d | 2020-11-18 | 2020-11-20 | 50 |  |  |
| 52 |  | 前台 | 1d | 2020-11-18 | 2020-11-18 |  |  |  |
| 53 |  | 后台 | 2d | 2020-11-19 | 2020-11-20 |  |  |  |
| 54 | 2.1.4.1.3 | **实现Excel数据驱动** | 3d | 2020-11-23 | 2020-11-25 | 51 |  |  |
| 55 |  | 前台 | 1d | 2020-11-23 | 2020-11-23 |  |  |  |
| 56 |  | 后台 | 1d | 2020-11-25 | 2020-11-25 |  |  |  |
| 57 | 2.1.4.1.4 | **用例整合运行** | 3d | 2020-11-26 | 2020-11-29 | 51, 54 |  |  |
| 58 |  | 前台 | 2d | 2020-11-26 | 2020-11-27 |  |  |  |
| 59 |  | 后台 | 1d | 2020-11-29 | 2020-11-29 |  |  |  |
| 60 |  | 服务器搭建 | 2d | 2020-12-02 | 2020-12-03 |  |  |  |
| 61 |  | 实现持续性集成 | 2d | 2020-12-04 | 2020-12-05 | 49, 60 |  |  |
| 62 | 2.1.5 | **渗透测试** | 11d | 2020-11-30 | 2020-12-14 |  |  |  |
| 63 |  | 下载安装bluecms_1.6 | 1d | 2020-11-30 | 2020-11-30 |  |  |  |
| 64 |  | 信息收集 | 1d | 2020-12-02 | 2020-12-02 |  |  |  |
| 65 |  | 利用burpsuit进行漏洞扫描 | 3d | 2020-12-03 | 2020-12-05 |  |  |  |
| 66 |  | 爬取网站 | 2d | 2020-12-06 | 2020-12-07 |  |  |  |
| 67 |  | 自动化攻击 | 2d | 2020-12-08 | 2020-12-09 |  |  |  |
| 68 |  | 对网站进行手工测试 | 3d | 2020-12-10 | 2020-12-12 |  |  |  |
| 69 |  | 发现漏洞 | 1d | 2020-12-14 | 2020-12-14 |  |  |  |
| 70 | 2.1.6 | **接口测试** | 6d | 2020-12-07 | 2020-12-14 |  |  |  |

| ID | WBS | Task | Duration | Start | Finish | Total float |
| --- | --- | --- | --- | --- | --- | --- |
| 71 |  | <新任务> | 1d? | 2020-12-07 | 2020-12-07 |  |
| 72 | 3 | **下面的注释掉** | 1d | 2020-11-17 | 2020-11-17 | 0d |
| 73 | 3.1 | **规划成本** | 1d | 2020-11-17 | 2020-11-17 |  |
| 74 |  | 项目成本估算 | 1d | 2020-11-17 | 2020-11-17 |  |
| 75 |  | 项目预算 | 0d | 2020-11-17 | 2020-11-17 |  |
| 76 |  | 形成范围基准 | 1d? | 2020-11-17 | 2020-11-17 |  |
| 77 | 3.2 | **规划质量** | 1d | 2020-11-17 | 2020-11-17 |  |
| 78 |  | 制定测试计划 | 1d? | 2020-11-17 | 2020-11-17 |  |
| 79 |  | 制定测试用例 | 1d | 2020-11-17 | 2020-11-17 |  |
| 80 | 3.3 | **规划人力资源** | 1d | 2020-11-17 | 2020-11-17 |  |
| 81 |  | 制定人力资源计划 | 1d | 2020-11-17 | 2020-11-17 |  |
| 82 |  | 制定人员配备管理计划 | 1d? | 2020-11-17 | 2020-11-17 |  |
| 83 | 3.4 | **规划沟通** | 1d | 2020-11-17 | 2020-11-17 |  |
| 84 |  | 制定沟通管理计划 | 1d | 2020-11-17 | 2020-11-17 |  |
| 85 | 3.5 | **规划采购** | 1d | 2020-11-17 | 2020-11-17 |  |
| 86 |  | 自制外购分析 | 1d | 2020-11-17 | 2020-11-17 |  |
| 87 |  | 制定采购文件 | 1d? | 2020-11-17 | 2020-11-17 |  |
| 88 | 3.6 | **规划风险** | 1d | 2020-11-17 | 2020-11-17 |  |
| 89 |  | 识别风险 | 1d? | 2020-11-17 | 2020-11-17 |  |
| 90 |  | 风险分析 | 1d? | 2020-11-17 | 2020-11-17 |  |
| 91 |  | 制定风险登记册 | 1d | 2020-11-17 | 2020-11-17 |  |
| 92 |  | 规划整合 | 1d? | 2020-11-17 | 2020-11-17 |  |

## Version 2 (saved 2020-12-06)

Note of the change: hejia20201206

Last finish 2020-12-15 → 2020-12-16 (+1d).

Added:

| ID | Task | Duration | Start | Finish | Resources |
| --- | --- | --- | --- | --- | --- |
| 24 | 其他 | 2d | 2020-11-11 | 2020-11-12 | 测试员3; 测试员2; 测试员4; 测试员5 |
| 33 | 其他 | 5d | 2020-11-16 | 2020-11-20 | 测试员5; 测试员4; 测试员2; 测试员3 |
| 41 | 其他 | 1d | 2020-11-21 | 2020-11-21 | 测试员3; 测试员2; 测试员4; 测试员5 |
| 50 | 其他 | 2d | 2020-11-22 | 2020-11-23 | 测试员3; 测试员2; 测试员4; 测试员5 |

Changed:

| ID | Task | Finish | Duration | Total float | Other |
| --- | --- | --- | --- | --- | --- |
| 1 | **启动** |  |  |  | resources none → 间接成本 [0.1%] |
| 2 | 组建核心团队 |  |  |  | resources 何佳 → 产品经理 |
| 3 | 干系人分析 |  |  |  | resources 何佳 → 产品经理 |
| 4 | 里程碑计划 |  |  |  | resources 付静怡 → 技术专家 |
| 5 | 制定项目章程 |  |  |  | resources 李雨竹 → 项目经理 |
| 6 | 项目启动大会 |  |  |  | resources 付静怡; 何佳; 解宇欣; 李晓涵; 李雨竹 → 项目经理; 技术专家; 产品经理; UI专家; 测试专家 |
| 7 | **规划** | 2020-12-15 → 2020-12-16 (+1d) | 28d → 29d |  | resources none → 间接成本 [0.1%] |
| 9 | **框架Selenium完善** |  |  |  | resources 付静怡; 何佳; 解宇欣; 李晓涵; 李雨竹 → none |
| 10 | 完善框架 |  |  |  | resources none → 测试员1; 测试员2; 测试员3; 测试员4; 测试员5 |
| 12 | ReportNG美化测试 |  |  |  | resources 何佳; 李晓涵 → 测试员1; 测试员2 |
| 13 | Freemarker+Selenium+TestNG |  |  |  | resources 付静怡; 解宇欣 → 测试员4; 测试员3 |
| 14 | testng-xslt |  |  |  | resources 李雨竹 → 测试员5 |
| 16 | 测试计划 |  |  |  | resources none → 测试员5; 测试员4; 测试员3; 测试员2; 测试员1 |
| 19 | 附近职位 |  |  |  | resources 何佳 → 测试员1 |
| 20 | 普工专区 |  |  |  | resources 何佳 → 测试员1 |
| 21 | 兼职职位 |  |  |  | resources 何佳 → 测试员1 |
| 22 | HR工具箱 |  |  |  | resources 何佳 → 测试员1 |
| 23 | 找企业 |  |  |  | resources 何佳 → 测试员1 |
| 26 | 运营-商城 |  |  |  | resources 何佳 → 测试员1 |
| 27 | 运营-广告 |  |  |  | resources 何佳 → 测试员1 |
| 28 | 运营-财务 |  |  |  | resources 何佳 → 测试员1 |
| 29 | 运营-专题 |  |  |  | resources 何佳 → 测试员1 |
| 30 | 运营-举报 |  |  |  | resources 何佳 → 测试员1 |
| 31 | 运营-营销 |  |  |  | resources 何佳 → 测试员1 |
| 32 | 首页界面 |  |  |  | resources 何佳 → 测试员1 |
| 36 | 附近职位 |  |  |  | resources none → 测试员1 |
| 37 | 普工专区 |  |  |  | resources none → 测试员1 |
| 38 | 兼职职位 |  |  |  | resources none → 测试员1 |
| 39 | HR工具箱 |  |  |  | resources none → 测试员1 |
| 40 | 找企业 |  |  |  | resources none → 测试员1 |
| 43 | 运营-商城 |  |  |  | resources none → 测试员1 |
| 44 | 运营-广告 |  |  |  | resources none → 测试员1 |
| 45 | 运营-财务 |  |  | 17d → 18d | resources none → 测试员1 |
| 46 | 运营-专题 |  |  | 16d → 17d | resources none → 测试员1 |
| 47 | 运营-举报 |  |  | 16d → 17d | resources none → 测试员1 |
| 48 | 运营-营销 |  |  | 16d → 17d | resources none → 测试员1 |
| 49 | 首页界面 |  |  | 16d → 17d | resources none → 测试员1 |
| 51 | 测试报告 |  |  |  | resources none → 测试员5; 测试员4; 测试员3; 测试员2; 测试员1 |
| 53 | **自动化测试** |  |  |  | resources none → 测试员5; 测试员4; 测试员3; 测试员2; 测试员1 |
| 64 | 服务器搭建 |  |  |  | resources none → 测试员5 |
| 65 | 实现持续性集成 |  |  |  | resources none → 测试员5; 测试员4; 测试员3; 测试员2; 测试员1 |
| 66 | **渗透测试** |  |  |  | resources none → 测试员5; 测试员4; 测试员3; 测试员2; 测试员1 |
| 74 | **接口测试** |  |  |  | resources none → 测试员5; 测试员4; 测试员3; 测试员2; 测试员1 |

## Version 3 (saved 2020-12-09)

Note of the change: hejiagengxin

Last finish stays 2020-12-16.

Added:

| ID | Task | Duration | Start | Finish | Resources |
| --- | --- | --- | --- | --- | --- |
| 76 | 数据库编写 | 3d | 2020-12-09 | 2020-12-11 | 测试员2; 测试员5 |
| 77 | 平台前台简单编写 | 3d | 2020-12-09 | 2020-12-11 | 测试员2; 测试员5 |
| 78 | 平台后台简单编写 | 2d | 2020-12-12 | 2020-12-13 | 测试员1; 测试员3; 测试员4 |

Changed:

| ID | Task | Start | Finish | Duration | Other |
| --- | --- | --- | --- | --- | --- |
| 74 | **接口测试** |  |  |  | resources 测试员5; 测试员4; 测试员3; 测试员2; 测试员1 → none |
| 75 | jsp学习 | 2020-12-07 → 2020-12-09 (+2d) | 2020-12-07 → 2020-12-11 (+4d) | 1d? → 3d | was named <新任务>; resources none → 测试员1; 测试员3; 测试员4 |
